# Implementación DPS24 On Line

Schedule from MS Project, 2012-11-01 to 2013-05-20, status date 2012-11-01.

## Calendars

- Estándar: Mon-Fri 08:00-14:00, 15:00-17:00; Sat-Sun off.

## Resources

| Resource |
| --- |
| Tecnologia |
| T&G |
| T&G,Sistemas |
| OyM |
| Sistemas |
| Sistemas,Tecnologia |
| T&G,Tecnologia,Sistemas,OyM |
| Sistemas, Tecnologia, OyM |
| T&G,Sistemas,Oym,Tecnologia |
| Tecnologia,Sistemas |
| T&G,Tecnologia,Sistemas,Org. |
| Organización |
| T&G |
| T&G,Sistemas |
| T&G,Sistemas,Org.,Tecnologia |
| Sistemas, Tecnologia, Org. |
| T&G,Sistemas, Organización |
| Sistemas, Tecnologia, Organización |
| Sistemas, Organización |
| Seguridad Informatica |
| Tecnología |
| Tecnologia, Seguridad |
| Tecnología, Seguridad |
| Seguridad |
| Seguridad Informática |
| Banco |
| Banco |
| Banco - T&G |
| Banco, Organización |
| Banco,Tecnologia |
| T&G,Banco |
| Sistemas - T&G |
| T&G, Sistemas, Organización |
| COA |

## Schedule

| ID | WBS | Task | Type | Duration | Start | Finish | Predecessors | Baseline start | Baseline finish | Baseline duration | Total slack | Free slack | Constraint | Resources | Work |
| --- | --- | --- | --- | --- | --- | --- | --- | --- | --- | --- | --- | --- | --- | --- | --- |
| 1 | 1 | **Proyecto Implementacion DPS24 Online** |  | 142d | 2012-11-01 | 2013-05-20 |  | 2010-06-03 | 2010-10-25 | 97.88d | 0d |  |  |  | 1408h |
| 2 | 1.1 | **Fase I - Apertura e Instalación** |  | 23d | 2012-11-01 | 2012-12-04 |  | 2010-06-03 | 2010-06-28 | 16d | -1d | 0d |  |  | 312h |
| 3 | 1.1.1 | Reunión de Inicio |  | 1d | 2012-11-01 | 2012-11-02 |  | 2010-06-03 | 2010-06-03 | 0d | 3d | 0d | start no earlier than 2012-11-01 |  |  |
| 4 | 1.1.2 | **Setup de ambiente de desarrollo y homologacion para DPS24** |  | 16d | 2012-11-01 | 2012-11-22 | 3 | 2010-06-03 | 2010-06-28 | 16d |  |  |  | Tecnologia, Seguridad | 206h |
| 5 | 1.1.2.1 | Instalación de hardware INTEL necesario (CPU,HD,RAM,LAN) |  | 2d | 2012-11-01 | 2012-11-05 |  | 2010-06-03 | 2010-06-10 | 5d | 4d | 0d |  | Tecnología | 16h |
| 6 | 1.1.2.2 | Sistema Operativo, Base de Datos y driver ODBC/LIbrería API |  | 2d | 2012-11-05 | 2012-11-07 | 5 | 2010-06-10 | 2010-06-17 | 5d | 8.88d | 0d |  | Tecnología | 16h |
| 7 | 1.1.2.3 | Establecer Usuario y contraseña de acceso a base de datos de Homologación |  | 1d | 2012-11-07 | 2012-11-08 | 6 | 2010-06-17 | 2010-06-18 | 1d | 10.88d |  |  | Seguridad Informática | 8h |
| 8 | 1.1.2.4 | Solicitar permiso al responsable de Seguridad |  | 1d | 2012-11-07 | 2012-11-08 | 6 | 2010-06-17 | 2010-06-18 | 1d | 8.88d | 0d |  | Seguridad Informática | 8h |
| 9 | 1.1.2.5 | Crear la cuenta en la base de datos y en el ambiente de Homologación |  | 1d | 2012-11-08 | 2012-11-09 | 8 | 2010-06-18 | 2010-06-22 | 1d | 9.88d |  |  | Sistemas,Tecnologia | 6h |
| 10 | 1.1.2.6 | Habilitar port IP en los firewalls. Publicar port y dirección IP del equipo. |  | 1d | 2012-11-05 | 2012-11-06 | 5 | 2010-06-10 | 2010-06-14 | 2d | 12.88d |  |  | Tecnología | 8h |
| 11 | 1.1.2.7 | Sistema Operativo Win2003 o superior, driver ODBC/LIbrería API - Host Integration Server |  | 2d | 2012-11-08 | 2012-11-12 | 8 | 2010-06-18 | 2010-06-28 | 5d | 8.88d |  |  | Tecnología | 16h |
| 12 | 1.1.3 | **Establecer Usuario y contraseña de acceso al sistema operativo, Grupo Administrador** |  | 2d | 2012-11-08 | 2012-11-12 | 5, 4 | 2010-06-10 | 2010-06-11 | 1d |  |  |  | Seguridad Informatica | 16h |
| 13 | 1.1.3.1 | Solicitar permiso al responsable de Seguridad |  | 1d | 2012-11-08 | 2012-11-09 |  | 2010-06-10 | 2010-06-11 | 1d | 1d |  |  |  |  |
| 14 | 1.1.3.2 | Crear cuenta en ambiente desarrollo, operativo y base de datos |  | 1d | 2012-11-08 | 2012-11-09 |  | 2010-06-10 | 2010-06-11 | 1d | 1d |  |  |  |  |
| 15 | 1.1.4 | **Habilitar port IP de DPS24 en los firewalls. Publicar port y direccion IP del equipo** |  | 15d | 2012-11-12 | 2012-12-03 | 12 | 2010-06-03 | 2010-06-25 | 15d | -1d | 0d |  |  | 90h |
| 16 | 1.1.4.1 | Contratar equipamiento y servicios de enlace (si corresponde) |  | 15d | 2012-11-12 | 2012-12-03 |  | 2010-06-03 | 2010-06-25 | 15d | -1d | 0d |  | Banco,Tecnologia | 90h |
| 17 | 1.1.4.2 | Habilitar la direccion IP y el port IP de la PC de DPS24 en la LAN, y publicarlo internamente. |  | 2d | 2012-11-12 | 2012-11-14 |  | 2010-06-03 | 2010-06-08 | 3d | 12d |  |  |  |  |
| 18 | 1.1.4.3 | Definir la LU6.2 SNA al que debe llamar DPS24 en Interbanking , y publicarlo internamente. |  | 2d | 2012-11-12 | 2012-11-14 |  | 2010-06-03 | 2010-06-08 | 3d | 12d |  |  |  |  |
| 19 | 1.1.5 | Solicitar turno de homologacion en Interbanking |  | 1d | 2012-12-03 | 2012-12-04 | 15, 12 | 2010-06-25 | 2010-07-02 | 5d | -1d | 0d |  |  |  |
| 20 | 1.2 | Infraestructura instalada | milestone | 0d | 2012-12-03 | 2012-12-03 | 15 | 2010-06-25 | 2010-06-25 | 0d | 120d |  |  |  |  |
| 21 | 1.3 | **Fase II - Personalización** |  | 45d | 2012-12-03 | 2013-02-04 | 2 | 2010-06-03 | 2010-07-27 | 35d | -2d | 0d |  |  | 510h |
| 22 | 1.3.1 | **Definiciones funcionales y diseños de las transacciones** |  | 15d | 2012-12-03 | 2012-12-24 | 3 | 2010-06-03 | 2010-06-25 | 15d |  |  |  | Sistemas, Organización | 210h |
| 23 | 1.3.1.1 | Comportamiento funcional de consultas, extracciones y pagos |  | 5d | 2012-12-03 | 2012-12-10 |  | 2010-06-03 | 2010-06-25 | 15d | 0d |  |  | Sistemas | 30h |
| 24 | 1.3.1.2 | Diseño de registro o interface de sistema de las consultas, extracciones y pagos |  | 5d | 2012-12-10 | 2012-12-17 | 23 | 2010-06-03 | 2010-06-25 | 15d | 0d |  |  | Sistemas | 30h |
| 25 | 1.3.1.3 | Definir si se utilizan BLOQUEO DE FONDOS o DEBITOS EN FIRME |  | 5d | 2012-12-17 | 2012-12-24 | 24 | 2010-06-03 | 2010-06-25 | 15d | 0d |  |  | Sistemas | 30h |

Notes:
- 3: Definición de los Líderes de ambas partes. Revisión de material técnico enviado por COA. / Relevamiento de estado actual respecto de infraestructura y necesidades funcionales iniciales.
- 5: Mínimo : INTEL Pentium Dual Core, 2Ghz, 1 GB RAM, 100GB HD, Ethernet 100 Mbps
- 16: Con Interbaking

| ID | WBS | Task | Type | Duration | Start | Finish | Predecessors | Baseline start | Baseline finish | Baseline duration | Total slack | Free slack | Constraint | Resources | Work |
| --- | --- | --- | --- | --- | --- | --- | --- | --- | --- | --- | --- | --- | --- | --- | --- |
| 26 | 1.3.2 | **Definir método de acceso a SISTEMAS O DB DEL BANCO y demas relacionados** |  | 30d | 2012-12-24 | 2013-02-04 | 22 | 2010-06-25 | 2010-07-27 | 20d | -2d | 0d |  | Sistemas,Tecnologia | 300h |
| 27 | 1.3.2.1 | Programación/Adecuación de subset de modulos en CORE Bancario |  | 20d | 2012-12-24 | 2013-01-21 |  | 2010-06-25 | 2010-07-26 | 19.88d | -2d | 0d |  |  |  |
| 28 | 1.3.2.2 | Definir/disponer/documentar Programas a utilizar por DPS24 |  | 10d | 2013-01-21 | 2013-02-04 | 27 | 2010-06-25 | 2010-07-27 | 20d | -2d | 0d |  | Sistemas | 60h |
| 29 | 1.4 | Definiciones entregadas a COA | milestone | 0d | 2013-02-04 | 2013-02-04 | 26 | 2010-07-27 | 2010-07-27 | 0d | 14d |  |  |  |  |
| 30 | 1.5 | **Fase III - Adaptación** |  | 24d | 2013-02-04 | 2013-03-08 | 21 | 2010-07-27 | 2010-08-09 | 9.88d | -2d | 0d |  |  | 326h |
| 31 | 1.5.1 | **Implementacion del Módulo DATANET** |  | 12d | 2013-02-04 | 2013-02-20 |  | 2010-07-27 | 2010-08-02 | 4d | -2d | 0d |  | T&G | 160h |
| 32 | 1.5.1.1 | Instalación y verificación ambiente Central y Win2003 |  | 4d | 2013-02-04 | 2013-02-08 |  | 2010-07-27 | 2010-08-02 | 4d | -2d | 0d |  | T&G,Sistemas | 32h |
| 33 | 1.5.1.2 | Relevamiento de documentación, DPS y Cálculo MAC-1-2-3 |  | 4d | 2013-02-08 | 2013-02-14 | 23, 32 | 2010-07-27 | 2010-08-02 | 4d | -2d | 0d |  | T&G,Sistemas | 32h |
| 34 | 1.5.1.3 | Consultas, capacitación, DPS, Cálculo MAC y otros relacionados |  | 4d | 2013-02-14 | 2013-02-20 | 33 | 2010-07-27 | 2010-08-02 | 4d | -2d | 0d |  | T&G,Sistemas | 32h |
| 35 | 1.5.2 | **Desarrollo de adaptaciones / transacciones solicitadas** |  | 14d | 2013-02-18 | 2013-03-08 | 31 | 2010-07-27 | 2010-08-09 | 9.88d | 0d |  |  | Sistemas | 166h |
| 36 | 1.5.2.1 | **Débitos / Créditos** |  | 12d | 2013-02-20 | 2013-03-08 |  | 2010-07-27 | 2010-07-29 | 2.62d | 0d |  |  |  | 82h |
| 37 | 1.5.2.1.1 | Nota de Débito CAJA AHORRO |  | 2d | 2013-02-20 | 2013-02-22 |  | 2010-07-27 | 2010-07-29 | 2d | 0d |  |  | Sistemas | 16h |
| 38 | 1.5.2.1.2 | Nota de Débito CUENTA CORRIENTE |  | 2d | 2013-02-22 | 2013-02-27 | 37 | 2010-07-27 | 2010-07-29 | 2d | 0d |  |  | Sistemas | 16h |
| 39 | 1.5.2.1.3 | Nota de Crédito CAJA AHORRO |  | 2d | 2013-02-27 | 2013-03-01 | 38 | 2010-07-27 | 2010-07-29 | 2d | 0d |  |  | Sistemas | 16h |
| 40 | 1.5.2.1.4 | Nota de Crédito CUENTA CORRIENTE |  | 2d | 2013-03-01 | 2013-03-05 | 39 | 2010-07-27 | 2010-07-29 | 2d | 0d |  |  | Sistemas | 16h |
| 41 | 1.5.2.1.5 | Reversos de DEBITOS Y CREDITOS |  | 3d | 2013-03-05 | 2013-03-08 | 40 | 2010-07-27 | 2010-07-29 | 2d | 0d |  |  | Sistemas | 18h |
| 42 | 1.5.2.2 | **Acceso al Journal diario** |  | 1d | 2013-02-18 | 2013-02-18 |  | 2010-07-28 | 2010-07-29 | 1d |  |  |  |  | 8h |
| 43 | 1.5.2.2.1 | Programas de INSERT / UPDATE / DELETE |  | 1d | 2013-02-18 | 2013-02-19 |  | 2010-07-28 | 2010-07-29 | 1d | 64d |  | start no earlier than 2013-02-18 | Sistemas | 8h |
| 44 | 1.5.2.3 | **Visualización del Journal para Centro Autorizador** |  | 12d | 2013-02-20 | 2013-03-08 |  | 2010-07-27 | 2010-08-09 | 9.88d | 0d |  |  |  | 16h |
| 45 | 1.5.2.3.1 | Programas de Consulta y Autorización |  | 2d | 2013-02-20 | 2013-02-22 |  | 2010-07-27 | 2010-07-30 | 3d | 0d |  |  | Sistemas | 16h |
| 46 | 1.5.2.3.2 | Adaptaciones propuestas por área usuaria |  | 10d | 2013-02-22 | 2013-03-08 | 29, 45 | 2010-07-27 | 2010-08-09 | 9.88d | 0d |  |  |  |  |
| 47 | 1.6 | Adaptaciones Finalizadas | milestone | 0d | 2013-03-08 | 2013-03-08 | 44 | 2010-08-09 | 2010-08-09 | 0d | 51d |  |  |  |  |
| 48 | 1.7 | **Fase IV - Pruebas de Aceptación y Prehomologación** |  | 9d | 2013-03-08 | 2013-03-21 | 30 | 2010-08-10 | 2010-08-13 | 4d | 0d |  |  |  |  |
| 49 | 1.7.1 | Ejecutar pruebas internas de Pre-Homologación |  | 4d | 2013-03-08 | 2013-03-14 |  | 2010-08-10 | 2010-08-13 | 4d | 0d |  |  |  |  |
| 50 | 1.7.2 | Pruebas Internas finalizadas |  | 5d | 2013-03-14 | 2013-03-21 | 49 | 2010-08-13 | 2010-08-13 | 0d | 0d |  |  |  |  |
| 51 | 1.8 | Interbanking - Ratificar TURNO para pruebas de homologación | milestone | 0d | 2013-03-21 | 2013-03-21 | 50 | 2010-08-13 | 2010-08-13 | 0d | 0d |  |  | Sistemas |  |

| ID | WBS | Task | Type | Duration | Start | Finish | Predecessors | Baseline start | Baseline finish | Baseline duration | Total slack | Constraint | Resources |
| --- | --- | --- | --- | --- | --- | --- | --- | --- | --- | --- | --- | --- | --- |
| 52 | 1.9 | **Fase V - Pruebas de Homologación** |  | 22d | 2013-03-21 | 2013-04-22 | 51, 48 | 2010-08-17 | 2010-09-15 | 22d | 0d |  |  |
| 53 | 1.9.1 | **Ejecución del Proceso de Homologación** |  | 22d | 2013-03-21 | 2013-04-22 |  | 2010-08-17 | 2010-09-15 | 22d | 0d |  |  |
| 54 | 1.9.1.1 | transferencias monobanco del día |  | 2d | 2013-03-21 | 2013-03-25 |  | 2010-08-17 | 2010-08-18 | 2d | 20d | start no earlier than 2011-07-01 |  |
| 55 | 1.9.1.2 | transferencias interbanco del día |  | 2d | 2013-03-21 | 2013-03-25 |  | 2010-08-17 | 2010-08-18 | 2d | 0d |  |  |
| 56 | 1.9.1.3 | transferencias monobanco diferidas |  | 2d | 2013-03-25 | 2013-03-27 | 55 | 2010-08-19 | 2010-08-20 | 2d | 18d |  |  |
| 57 | 1.9.1.4 | transferencias interbanco diferidas |  | 2d | 2013-03-25 | 2013-03-27 | 55 | 2010-08-19 | 2010-08-20 | 2d | 0d |  |  |
| 58 | 1.9.1.5 | transferencias monobanco del día en USD |  | 2d | 2013-03-27 | 2013-03-29 | 57 | 2010-08-23 | 2010-08-24 | 2d | 16d |  |  |
| 59 | 1.9.1.6 | transferencias monobanco diferidas en USD |  | 2d | 2013-03-27 | 2013-03-29 | 57 | 2010-08-23 | 2010-08-24 | 2d | 0d |  |  |
| 60 | 1.9.1.7 | transferencias interbanco del día en USD |  | 2d | 2013-03-29 | 2013-04-02 | 59 | 2010-08-25 | 2010-08-26 | 2d | 14d |  |  |
| 61 | 1.9.1.8 | transferencias interbanco diferidas en USD |  | 2d | 2013-03-29 | 2013-04-02 | 59 | 2010-08-25 | 2010-08-26 | 2d | 0d |  |  |
| 62 | 1.9.1.9 | transferencias de crédito del día |  | 2d | 2013-04-02 | 2013-04-04 | 61 | 2010-08-27 | 2010-08-30 | 2d | 12d |  |  |
| 63 | 1.9.1.10 | transferencias de crédito diferidas |  | 2d | 2013-04-02 | 2013-04-04 | 61 | 2010-08-27 | 2010-08-30 | 2d | 0d |  |  |
| 64 | 1.9.1.11 | transferencias reverso débito |  | 2d | 2013-04-04 | 2013-04-08 | 63 | 2010-08-31 | 2010-09-01 | 2d | 10d |  |  |
| 65 | 1.9.1.12 | transferencias con cuenta de débito inválida / sin fondos / cerrada |  | 2d | 2013-04-04 | 2013-04-08 | 63 | 2010-08-31 | 2010-09-01 | 2d | 0d |  |  |
| 66 | 1.9.1.13 | transferencias con cuenta de crédito inválida |  | 2d | 2013-04-08 | 2013-04-10 | 65 | 2010-09-02 | 2010-09-03 | 2d | 8d |  |  |
| 67 | 1.9.1.14 | transferencias de Facturación |  | 2d | 2013-04-08 | 2013-04-10 | 65 | 2010-09-02 | 2010-09-03 | 2d | 0d |  |  |
| 68 | 1.9.1.15 | transferencias de Aduana |  | 2d | 2013-04-10 | 2013-04-12 | 67 | 2010-09-06 | 2010-09-07 | 2d | 6d |  |  |
| 69 | 1.9.1.16 | transferencias con Mac1 erróneo |  | 2d | 2013-04-10 | 2013-04-12 | 67 | 2010-09-06 | 2010-09-07 | 2d | 0d |  |  |
| 70 | 1.9.1.17 | transferencias con Mac2 erróneo |  | 2d | 2013-04-12 | 2013-04-16 | 69 | 2010-09-08 | 2010-09-09 | 2d | 4d |  |  |
| 71 | 1.9.1.18 | transferencias con Mac3 erróneo |  | 2d | 2013-04-12 | 2013-04-16 | 69 | 2010-09-08 | 2010-09-09 | 2d | 0d |  |  |
| 72 | 1.9.1.19 | transferencias de débito con un banco que no tengan cargada en la tabla de claves. |  | 2d | 2013-04-16 | 2013-04-18 | 71 | 2010-09-10 | 2010-09-13 | 2d | 2d |  |  |
| 73 | 1.9.1.20 | transferencias de crédito con un banco que no tengan cargada en la tabla de claves. |  | 2d | 2013-04-16 | 2013-04-18 | 71 | 2010-09-10 | 2010-09-13 | 2d | 0d |  |  |
| 74 | 1.9.1.21 | transferencias con tratamiento interrumpido momentáneamente por exceder el riesgo. |  | 2d | 2013-04-18 | 2013-04-22 | 73 | 2010-09-14 | 2010-09-15 | 2d | 0d |  |  |
| 75 | 1.9.1.22 | Si el Banco trata diferidas, enviar transferencias diferidas contra un banco que no trata diferidas (marca de no tratamiento diferidas). |  | 2d | 2013-04-18 | 2013-04-22 | 73 | 2010-09-14 | 2010-09-15 | 2d | 0d |  |  |
| 76 | 1.10 | Conformidad Interbanking - Aceptación Homologación | milestone | 0d | 2013-04-22 | 2013-04-22 | 75 | 2010-09-15 | 2010-09-15 | 0d | 20d |  | Banco |

| ID | WBS | Task | Duration | Start | Finish | Predecessors | Baseline start | Baseline finish | Baseline duration | Total slack | Resources | Work |
| --- | --- | --- | --- | --- | --- | --- | --- | --- | --- | --- | --- | --- |
| 77 | 1.11 | **Fase VI - Puesta en Producción** | 20d | 2013-04-22 | 2013-05-20 | 52 | 2010-09-16 | 2010-10-25 | 27d | 0d |  | 260h |
| 78 | 1.11.1 | **Quality & Assurance (Q&A) DPS para Deb/Cre - Interbanking** | 13d | 2013-04-22 | 2013-05-09 |  | 2010-09-16 | 2010-10-12 | 18d | 0d | Sistemas,Tecnologia | 200h |
| 79 | 1.11.1.1 | Definiciones del Banco sobre la ejecucion de Q&A | 1d | 2013-04-22 | 2013-04-23 |  | 2010-09-16 | 2010-09-16 | 1d | 0d |  |  |
| 80 | 1.11.1.2 | **Ejecucion del Proceso de QA** | 12d | 2013-04-23 | 2013-05-09 | 79 | 2010-09-17 | 2010-10-12 | 17d | 0d | Banco | 96h |
| 81 | 1.11.1.2.1 | transferencias monobanco del día | 1d | 2013-04-23 | 2013-04-24 | 79 | 2010-09-17 | 2010-09-20 | 2d | 0d |  |  |
| 82 | 1.11.1.2.2 | transferencias interbanco del día | 1d | 2013-04-23 | 2013-04-24 | 79 | 2010-09-17 | 2010-09-20 | 2d | 11d |  |  |
| 83 | 1.11.1.2.3 | transferencias monobanco diferidas | 1d | 2013-04-24 | 2013-04-25 | 81 | 2010-09-21 | 2010-09-22 | 2d | 0d |  |  |
| 84 | 1.11.1.2.4 | transferencias interbanco diferidas | 1d | 2013-04-24 | 2013-04-25 | 81 | 2010-09-21 | 2010-09-22 | 2d | 10d |  |  |
| 85 | 1.11.1.2.5 | transferencias monobanco del día en USD | 1d | 2013-04-25 | 2013-04-26 | 83 | 2010-09-23 | 2010-09-23 | 1d | 0d |  |  |
| 86 | 1.11.1.2.6 | transferencias monobanco diferidas en USD | 1d | 2013-04-25 | 2013-04-26 | 83 | 2010-09-23 | 2010-09-23 | 1d | 9d |  |  |
| 87 | 1.11.1.2.7 | transferencias interbanco del día en USD | 1d | 2013-04-26 | 2013-04-29 | 85 | 2010-09-24 | 2010-09-24 | 1d | 0d |  |  |
| 88 | 1.11.1.2.8 | transferencias interbanco diferidas en USD | 1d | 2013-04-26 | 2013-04-29 | 85 | 2010-09-24 | 2010-09-24 | 1d | 8d |  |  |
| 89 | 1.11.1.2.9 | transferencias de crédito del día | 1d | 2013-04-29 | 2013-04-30 | 87 | 2010-09-27 | 2010-09-27 | 1d | 0d |  |  |
| 90 | 1.11.1.2.10 | transferencias de crédito diferidas | 1d | 2013-04-29 | 2013-04-30 | 87 | 2010-09-27 | 2010-09-27 | 1d | 7d |  |  |
| 91 | 1.11.1.2.11 | transferencias reverso débito | 1d | 2013-04-30 | 2013-05-01 | 89 | 2010-09-28 | 2010-09-28 | 1d | 0d |  |  |
| 92 | 1.11.1.2.12 | transferencias con cuenta de débito inválida / sin fondos / cerrada | 1d | 2013-04-30 | 2013-05-01 | 89 | 2010-09-28 | 2010-09-28 | 1d | 6d |  |  |
| 93 | 1.11.1.2.13 | transferencias con cuenta de crédito inválida | 1d | 2013-05-01 | 2013-05-02 | 91 | 2010-09-29 | 2010-09-29 | 1d | 0d |  |  |
| 94 | 1.11.1.2.14 | transferencias de Facturación | 1d | 2013-05-01 | 2013-05-02 | 91 | 2010-09-29 | 2010-09-29 | 1d | 5d |  |  |
| 95 | 1.11.1.2.15 | transferencias de Aduana | 1d | 2013-05-02 | 2013-05-03 | 93 | 2010-09-30 | 2010-09-30 | 1d | 0d |  |  |
| 96 | 1.11.1.2.16 | transferencias con Mac1 erróneo | 1d | 2013-05-02 | 2013-05-03 | 93 | 2010-09-30 | 2010-09-30 | 1d | 4d |  |  |
| 97 | 1.11.1.2.17 | transferencias con Mac2 erróneo | 1d | 2013-05-03 | 2013-05-06 | 95 | 2010-10-01 | 2010-10-01 | 1d | 0d |  |  |
| 98 | 1.11.1.2.18 | transferencias con Mac3 erróneo | 1d | 2013-05-03 | 2013-05-06 | 95 | 2010-10-01 | 2010-10-01 | 1d | 3d |  |  |
| 99 | 1.11.1.2.19 | transferencias de débito con un banco que no tengan cargada en la tabla de claves. | 1d | 2013-05-06 | 2013-05-07 | 97 | 2010-10-04 | 2010-10-04 | 1d | 0d |  |  |
| 100 | 1.11.1.2.20 | transferencias de crédito con un banco que no tengan cargada en la tabla de claves. | 1d | 2013-05-06 | 2013-05-07 | 97 | 2010-10-04 | 2010-10-04 | 1d | 2d |  |  |
| 101 | 1.11.1.2.21 | transferencias con tratamiento interrumpido momentáneamente por exceder el riesgo. | 1d | 2013-05-07 | 2013-05-08 | 99 | 2010-10-05 | 2010-10-05 | 1d | 0d |  |  |
| 102 | 1.11.1.2.22 | Si el Banco trata diferidas, enviar transferencias diferidas contra un banco que no trata diferidas (marca de no tratamiento diferidas). | 1d | 2013-05-07 | 2013-05-08 | 99 | 2010-10-05 | 2010-10-05 | 1d | 1d |  |  |
| 103 | 1.11.1.2.23 | Verificar comisionamiento, contabilidad y conciliacion mas reportes respectivos | 1d | 2013-05-08 | 2013-05-09 | 101 | 2010-10-06 | 2010-10-12 | 4d | 0d |  |  |

| ID | WBS | Task | Type | Duration | Start | Finish | Predecessors | Baseline start | Baseline finish | Baseline duration | Total slack | Resources | Work |
| --- | --- | --- | --- | --- | --- | --- | --- | --- | --- | --- | --- | --- | --- |
| 104 | 1.11.2 | **Tunning y performance** |  | 4d | 2013-05-09 | 2013-05-15 | 78 | 2010-10-13 | 2010-10-20 | 6d | 0d | Sistemas, Organización | 44h |
| 105 | 1.11.2.1 | Ajustes de Tunning y Performance |  | 2d | 2013-05-09 | 2013-05-13 |  | 2010-10-13 | 2010-10-19 | 5d | 0d |  |  |
| 106 | 1.11.2.2 | Aceptacion del Sistema |  | 2d | 2013-05-13 | 2013-05-15 | 105 | 2010-10-20 | 2010-10-20 | 1d | 0d | Sistemas,Tecnologia | 12h |
| 107 | 1.11.3 | Puesta en produccion Deb/Cre |  | 1d | 2013-05-15 | 2013-05-16 | 106 | 2010-10-21 | 2010-10-21 | 1d | 0d |  |  |
| 108 | 1.11.4 | **Documentacion** |  | 2d | 2013-05-16 | 2013-05-20 | 104 | 2010-10-22 | 2010-10-25 | 2d | 0d | COA | 16h |
| 109 | 1.11.4.1 | Actualizar Documentacion de DPS24 |  | 2d | 2013-05-16 | 2013-05-20 | 107 | 2010-10-22 | 2010-10-25 | 2d | 0d |  |  |
| 110 | 1.12 | DPS On Line en Producción y Documentación Entregada | milestone | 0d | 2013-05-20 | 2013-05-20 | 109 | 2010-10-25 | 2010-10-25 | 0d | 0d |  |  |
